# IWB 项目进度

How a schedule from a web Gantt chart changed from version to version. A marks actual dates.

## Version 1 (saved 2025-03-05)

| ID | WBS | Task | Duration | Start | Finish | Complete |
| --- | --- | --- | --- | --- | --- | --- |
| 2 | 1 | **整机样品采购，拆机学习** | 1d | 2025-03-05 | 2025-03-05 | 100% |
| 3 |  | 55，65，75，86整机采购 | 1d | 2025-03-05 | 2025-03-05 | 100% |
| 4 |  | 样品自组装（确认精确BOM） | 1d | 2025-03-05 | 2025-03-05 |  |
| 5 |  | 编制SOP | 1d | 2025-03-05 | 2025-03-05 |  |

## Version 2 (saved 2025-03-05)

Last finish 2025-03-05 → 2025-04-03 (+29d). Complete tasks 1 → 7.

Added:

| ID | Task | Duration | Start | Finish | Predecessors |
| --- | --- | --- | --- | --- | --- |
| 4 | **55，86样品自组装（确认精确BOM，编制SOP）** | 18d | 2025-03-05 | 2025-03-25 |  |
| 5 | 55嘀嗒背光采购，功能确认 | 1d | 2025-03-05 | 2025-03-05 |  |
| 6 | 4800摄像头+8阵列 样品采购，功能确认 | 1d | 2025-03-05 | 2025-03-05 |  |
| 7 | 55 液晶玻璃样品采购，功能确认 | 1d | 2025-03-05 | 2025-03-05 |  |
| 8 | 86 液晶玻璃样品采购，功能确认 | 1d | 2025-03-05 | 2025-03-05 |  |
| 9 | 主板，电源板，NFC OPS接口 样品采购，功能确认 | 1d | 2025-03-05 | 2025-03-05 |  |
| 10 | 86嘀嗒背光采购，功能确认 | 2d | 2025-03-05 | 2025-03-06 |  |
| 11 | 55型材设计打样（增加摄像头，NFC），功能确认 | 15d | 2025-03-05 | 2025-03-21 |  |
| 12 | 86型材设计打样（增加NFC)，功能确认 | 15d | 2025-03-05 | 2025-03-21 |  |
| 13 | 55结构件设计打样（五金挡板，转接板等），功能确认 | 7d | 2025-03-05 | 2025-03-12 |  |
| 14 | 机内线材确认以及打样，功能确认 | 10d | 2025-03-05 | 2025-03-15 |  |
| 15 | 55，86 触摸条 样品采购，功能确认 | 5d | 2025-03-05 | 2025-03-10 |  |
| 16 | 55，86 钢化玻璃 样品采购，功能确认 | 10d | 2025-03-06 | 2025-03-17 |  |
| 17 | 55，86 样品组装确认 | 3d | 2025-03-22 | 2025-03-25 | 11 |
| 18 | 精确BOM编制 | 3d | 2025-03-26 | 2025-03-28 | 17 |
| 19 | SOP编制 | 5d | 2025-03-29 | 2025-04-03 | 18 |

Removed: 4 样品自组装（确认精确BOM）; 5 编制SOP

## Version 3 (saved 2025-03-11)

Last finish 2025-04-03 → 2025-04-09 (+6d). Complete tasks 7 → 6.

Added:

| ID | Task | Duration | Start | Finish |
| --- | --- | --- | --- | --- |
| 7 | 4800摄像头+8阵列麦克风 言禾样品 兼容设计 | 5d | 2025-03-05 | 2025-03-10 |
| 8 | 55 OC 液晶玻璃样品采购，功能确认 | 1d | 2025-03-05 | 2025-03-05 |
| 9 | 86 OC 液晶玻璃样品采购，功能确认 | 1d | 2025-03-05 | 2025-03-05 |
| 17 | 55,86 佳锐拓 提供样品 | 5d | 2025-03-10 | 2025-03-14 |

Removed: 7 55 液晶玻璃样品采购，功能确认; 8 86 液晶玻璃样品采购，功能确认

Changed:

| ID | Task | Start | Finish | Duration | Complete | Predecessors |
| --- | --- | --- | --- | --- | --- | --- |
| 4 | **55，86样品自组装（确认精确BOM，编制SOP）** |  | 2025-03-25 → 2025-03-31 (+6d) | 18d → 23d | 41% → 36% |  |
| 6 | **4800摄像头+8阵列 样品采购，功能确认** |  | 2025-03-05 → 2025-03-10 (+5d) | 1d → 5d | 100% → 0% |  |
| 11 | 86嘀嗒背光采购，功能确认 |  | 2025-03-06 → 2025-03-11 (+5d) | 2d → 6d |  |  |
| 12 | 55型材设计打样（增加摄像头，NFC），功能确认 | 2025-03-05 → 2025-03-11 (+6d) | 2025-03-21 → 2025-03-27 (+6d) |  |  |  |
| 13 | 86型材设计打样（增加NFC)，功能确认 | 2025-03-05 → 2025-03-11 (+6d) | 2025-03-21 → 2025-03-27 (+6d) |  |  |  |
| 16 | **55，86 触摸条 样品采购，功能确认** | 2025-03-05 → 2025-03-10 (+5d) | 2025-03-10 → 2025-03-14 (+4d) |  | 80% → 0% |  |
| 18 | 55，86 钢化玻璃 样品采购，功能确认 | 2025-03-06 → 2025-03-10 (+4d) | 2025-03-17 → 2025-03-20 (+3d) |  |  |  |
| 19 | 55，86 样品组装确认 | 2025-03-22 → 2025-03-28 (+6d) | 2025-03-25 → 2025-03-31 (+6d) |  |  | 12 → 13 |
| 20 | 精确BOM编制 | 2025-03-26 → 2025-04-01 (+6d) | 2025-03-28 → 2025-04-03 (+6d) |  |  |  |
| 21 | SOP编制 | 2025-03-29 → 2025-04-04 (+6d) | 2025-04-03 → 2025-04-09 (+6d) |  |  |  |

## Version 4 (saved 2025-03-18)

Last finish stays 2025-04-09. Complete tasks 6 → 8.

Changed:

| ID | Task | Finish | Duration | Complete |
| --- | --- | --- | --- | --- |
| 4 | **55，86样品自组装（确认精确BOM，编制SOP）** |  |  | 36% → 54% |
| 16 | **55，86 触摸条 样品采购，功能确认** | 2025-03-14 → 2025-03-17 (+3d) | 5d → 7d | 0% → 100% |
| 17 | 55,86 佳锐拓 提供样品 | 2025-03-14 → 2025-03-17 (+3d) | 5d → 7d | 0% → 100% |
| 18 | 55，86 钢化玻璃 样品采购，功能确认 | 2025-03-20 → 2025-03-18 (-2d) | 10d → 8d | 0% → 100% |

## Version 5 (saved 2025-04-10)

Last finish 2025-04-09 → 2025-04-23 (+14d). Complete tasks 8 → 12.

Changed:

| ID | Task | Start | Finish | Duration | Complete |
| --- | --- | --- | --- | --- | --- |
| 4 | **55，86样品自组装（确认精确BOM，编制SOP）** |  | 2025-03-31 → 2025-04-14 (+14d) | 23d → 35d | 54% → 92% |
| 12 | 55型材设计打样（增加摄像头，NFC），功能确认 |  | 2025-03-27 → 2025-04-10 (+14d) | 15d → 27d | 50% → 100% |
| 13 | 86型材设计打样（增加NFC)，功能确认 |  | 2025-03-27 → 2025-04-10 (+14d) | 15d → 27d | 50% → 100% |
| 14 | 55结构件设计打样（五金挡板，转接板等），功能确认 |  |  |  | 50% → 100% |
| 15 | 机内线材确认以及打样，功能确认 |  |  |  | 0% → 100% |
| 19 | 55，86 样品组装确认 | 2025-03-28 → 2025-04-11 (+14d) | 2025-03-31 → 2025-04-14 (+14d) |  |  |
| 20 | 精确BOM编制 | 2025-04-01 → 2025-04-15 (+14d) | 2025-04-03 → 2025-04-17 (+14d) |  |  |
| 21 | SOP编制 | 2025-04-04 → 2025-04-18 (+14d) | 2025-04-09 → 2025-04-23 (+14d) |  |  |
